Schedule from OmniPlan, 2013-08-02 to 2013-10-15.
Project start 2013-08-02

## Resources

| Resource | Group |
| --- | --- |
| Resource 1 | staff |
| Equipment 1 | equipment |
| Material 1 | material |
| Group 1 | group |
| 萍钢 | staff |
| 志泽 | staff |
| 动画 | staff |
| 小一 | staff |
| 夏贝 | staff |
| 红明 | staff |
| 策划 | staff |
| 王刚 | staff |

## Schedule

| ID | WBS | Task | Start | Predecessors | Complete | Resources | Work | Actual work |
| --- | --- | --- | --- | --- | --- | --- | --- | --- |
| 1 | 1 | **技术调研Demo制作** |  |  |  |  |  |  |
| 2 | 1.1 | 选定框架 | 2013-08-05 |  | 100% | 萍钢 | 8h | 8h |
| 3 | 1.2 | 物理引擎Demo | 2013-08-06 | 2 | 100% | 萍钢 | 40h | 40h |
| 4 | 1.3 | DragonBones和Box2D的Demo | 2013-08-13 | 3 | 50% | 萍钢 | 24h | 12h |
| 5 | 1.4 | 粒子引擎Demo | 2013-08-16 | 4 |  | 萍钢 | 8h |  |
| 6 | 2 | 策划额外讨论 |  |  | 80% |  | 32h | 25.6h |
| 7 | 3 | **引子** |  |  |  |  |  |  |
| 8 | 3.1 | 故事策划 | 2013-08-08 | 6 | 100% | 策划 | 16h | 16h |
| 9 | 3.2 | 图画 | 2013-08-16 | 8 |  | 红明 | 24h |  |
| 10 | 3.3 | 开发 | 2013-08-19 | 5 |  | 萍钢 | 4h |  |
| 11 | 4 | **首页** |  |  |  |  |  |  |
| 12 | 4.1 | 策划 | 2013-08-16 | 8 |  | 策划 | 4h |  |
| 13 | 4.2 | 美术 | 2013-08-21 | 9 |  | 红明 | 24h |  |
| 14 | 4.3 | 开发 | 2013-08-20 | 10 |  | 萍钢 | 4h |  |
| 15 | 5 | **登陆注册** |  |  |  |  |  |  |
| 16 | 5.1 | 产品原型 | 2013-08-08 |  |  | 志泽 | 4h |  |
| 17 | 5.2 | UI风格 | 2013-08-13 | 24 | 50% | 红明 | 16h | 8h |
| 18 | 5.3 | UI设计 | 2013-08-15 | 17 |  | 夏贝 | 1h |  |
| 19 | 5.4 | 前端开发 | 2013-08-21 | 14 |  | 萍钢 | 3h |  |
| 20 | 5.5 | 后台 | 2013-08-02 |  |  | 小一 | 4h |  |
| 21 | 5.6 | 封号默认提供值 | 2013-08-19 | 12 |  | 策划 | 4h |  |
| 22 | 6 | **个人中心** |  |  |  |  |  |  |
| 23 | 6.1 | 个人中心相关策划 | 2013-08-20 | 21 |  | 策划 | 40h |  |
| 24 | 6.2 | 产品原型 | 2013-08-09 | 16 |  | 志泽 | 16h |  |
| 25 | 6.3 | UI设计 | 2013-08-16 | 18 |  | 夏贝 | 16h |  |
| 26 | 6.4 | 个人信息、成就、收集、游戏入口研发 | 2013-08-22 | 19 |  | 萍钢 | 16h |  |
| 27 | 6.5 | 成就、收集接口 | 2013-08-08 | 20 |  | 小一 | 8h |  |
| 28 | 6.6 | 速成手册 | 2013-08-26 | 26 |  | 萍钢 | 24h |  |

Notes:
- 7: 4-5 / 页图，小狮子动画 / 1 / 个
- 15: 引子之后出现，不联网不让玩，注册登陆过后就可以不联网玩了 / 封号：默认提供、也可更改 / 用户名 / 密码
- 21: 默认提供、也可更改
- 22: 个人信息展示：显示封号、用户、注销账号、积分、属性 / 成就 / 收集 / 游戏入口 / 工具：帮助文档、地图 / 制作团队
- 23: 成就体系、收集体系、速成手册、制作团队

| ID | WBS | Task | Start | Predecessors | Complete | Resources | Work | Actual work |
| --- | --- | --- | --- | --- | --- | --- | --- | --- |
| 29 | 6.7 | **地图** |  |  |  |  |  |  |
| 30 | 6.7.1 | 美术 | 2013-08-20 | 25 |  | 夏贝 | 8h |  |
| 31 | 6.7.2 | 策划交互点 | 2013-08-27 | 23 |  | 策划 | 4h |  |
| 32 | 6.7.3 | 开发 | 2013-08-29 | 28 |  | 萍钢 | 16h |  |
| 33 | 6.8 | 制作团队 |  |  |  |  | 8h |  |
| 34 | 7 | **社交分享** |  |  |  |  |  |  |
| 35 | 7.1 | 策划分享点和文案 | 2013-09-04 | 39 |  | 策划 | 24h |  |
| 36 | 7.2 | 研发 | 2013-08-09 | 27 |  | 小一 | 8h |  |
| 37 | 7.3 | UI皮肤 | 2013-08-21 | 30 |  | 夏贝 | 4h |  |
| 38 | 8 | **小狮子动画** |  |  |  |  |  |  |
| 39 | 8.1 | 多个动作策划，最好跟模块走 | 2013-08-28 | 31 |  | 策划 | 40h |  |
| 40 | 9 | **模块1** |  |  |  |  |  |  |
| 41 | 9.1 | 策划 | 2013-09-06 | 39 | 100% | 策划 | 8h | 8h |
| 42 | 9.2 | 模块UI | 2013-08-22 | 37 |  | 夏贝 | 16h |  |
| 43 | 9.3 | **场景一** |  |  |  |  |  |  |
| 44 | 9.3.1 | 美术1 | 2013-08-23 | 17 | 50% | 红明 | 16h | 8h |
| 45 | 9.3.2 | 开发 | 2013-09-02 | 32 |  | 萍钢 | 8h |  |
| 46 | 9.4 | **场景二** |  |  |  |  |  |  |
| 47 | 9.4.1 | 美术1，服装 | 2013-08-26 | 42 | 80% | 夏贝 | 16h | 12.8h |
| 48 | 9.4.2 | 美术2 | 2013-08-27 | 44 |  | 红明 | 8h |  |
| 49 | 9.4.3 | 开发 | 2013-09-03 | 45 |  | 萍钢 | 16h |  |
| 50 | 9.4.4 | 小动画 | 2013-08-20 | 25 |  | 志泽 | 8h |  |
| 51 | 9.5 | **场景三** |  |  |  |  |  |  |
| 52 | 9.5.1 | 美术 | 2013-08-28 | 48 |  | 红明 | 4h |  |
| 53 | 9.5.2 | 开发 | 2013-09-05 | 49 |  | 萍钢 | 8h |  |

Notes:
- 29: 拖拽、数据交互
- 40: 晨起

| ID | WBS | Task | Start | Predecessors | Resources | Work |
| --- | --- | --- | --- | --- | --- | --- |
| 54 | 10 | **模块2** |  |  |  |  |
| 55 | 10.1 | **场景1** |  |  |  |  |
| 56 | 10.1.1 | 策划 | 2013-09-10 | 41 | 策划 | 8h |
| 57 | 10.1.2 | 美术 | 2013-08-29 | 52 | 红明 | 16h |
| 58 | 10.1.3 | 开发 | 2013-09-06 | 53 | 萍钢 | 8h |
| 59 | 10.2 | **场景2** |  |  |  |  |
| 60 | 10.2.1 | 策划 | 2013-09-11 | 56 | 策划 | 8h |
| 61 | 10.2.2 | 美术 | 2013-09-02 | 57 | 红明 | 16h |
| 62 | 10.2.3 | 开发 | 2013-09-09 | 58 | 萍钢 | 40h |
| 63 | 11 | **模块3** |  |  |  |  |
| 64 | 11.1 | 策划 | 2013-09-11 | 56 | 策划 | 24h |
| 65 | 11.2 | 主场景原画 | 2013-09-04 | 61 | 红明 | 24h |
| 66 | 11.3 | 游戏元素原画 | 2013-08-28 | 47 | 夏贝 | 40h |
| 67 | 11.4 | 开发 | 2013-09-16 | 62 | 萍钢 | 40h |
| 68 | 12 | **模块4** |  |  |  |  |
| 69 | 12.1 | **场景1** |  |  |  |  |
| 70 | 12.1.1 | 美术 | 2013-09-09 | 65 | 红明 | 16h |
| 71 | 12.1.2 | 策划 | 2013-09-17 | 64 | 策划 | 12h |
| 72 | 12.1.3 | 开发 | 2013-09-24 | 67 | 萍钢 | 8h |
| 73 | 12.2 | **场景2** |  |  |  |  |
| 74 | 12.2.1 | 美术 | 2013-09-11 | 70 | 红明 | 16h |
| 75 | 12.2.2 | 策划 | 2013-09-22 | 71 | 策划 | 12h |
| 76 | 12.2.3 | 开发 | 2013-09-25 | 72 | 萍钢 | 40h |
| 77 | 13 | **模块5** |  |  |  |  |
| 78 | 13.1 | **场景1** |  |  |  |  |
| 79 | 13.1.1 | 策划 | 2013-09-24 | 75 | 策划 | 12h |
| 80 | 13.1.2 | 美术 | 2013-09-13 | 74 | 红明 | 16h |
| 81 | 13.1.3 | 开发 | 2013-10-09 | 76 | 萍钢 | 8h |

Notes:
- 54: 锻炼
- 55: 练武场、兵器架
- 59: 骑射
- 63: 传膳、做菜、试菜
- 68: 早读
- 73: 选书：圣训、要读的书
- 77: 上朝
- 78: 上朝情景

| ID | WBS | Task | Start | Predecessors | Complete | Resources | Work | Actual work |
| --- | --- | --- | --- | --- | --- | --- | --- | --- |
| 82 | 13.2 | **场景2** |  |  |  |  |  |  |
| 83 | 13.2.1 | 策划 | 2013-09-26 | 79 |  | 策划 | 1.5h |  |
| 84 | 13.2.2 | 美术 | 2013-09-17 | 80 |  | 红明 | 16h |  |
| 85 | 13.2.3 | 开发，可写的，可选的 | 2013-10-10 | 81 |  | 萍钢 | 24h |  |
| 86 | 14 | **模块6** |  |  |  |  |  |  |
| 87 | 14.1 | **场景1** |  |  |  |  |  |  |
| 88 | 14.1.1 | 策划 | 2013-09-27 | 83 |  | 策划 | 12h |  |
| 89 | 14.1.2 | 美术 | 2013-09-22 | 84 | 50% | 红明 | 16h | 8h |
| 90 | 14.1.3 | 开发 | 2013-10-14 | 85 |  | 萍钢 | 8h |  |
| 91 | 14.2 | **场景2** |  |  |  |  |  |  |
| 92 | 14.2.1 | 策划 | 2013-10-08 | 88 |  | 策划 | 12h |  |
| 93 | 14.2.2 | 美术 | 2013-09-24 | 89 |  | 红明 | 16h |  |
| 94 | 14.2.3 | 开发 | 2013-10-15 | 90 |  | 萍钢 | 40h |  |
| 95 | 14.2.4 | 动画 |  |  |  |  | 24h |  |

Notes:
- 82: 批奏折
- 86: 娱乐
- 87: 外景
- 91: 戏台
